# Practica2

How a schedule from MS Project changed from version to version. A marks actual dates.

## Version 1 (saved 2017-03-26)

Note of the change: Tareas asignadas. Siguiente paso, asignación de recursos.

| ID | WBS | Task | Duration | Start | Finish | Predecessors | Total float |
| --- | --- | --- | --- | --- | --- | --- | --- |
| 1 | 1 | **Total Proyecto** | 247d | 2017-02-20 | 2018-02-15 |  |  |
| 2 | 1.1 | **FASE 1: PREPARACION PARA LA FORMULACION** | 36d | 2017-02-20 | 2017-04-11 |  |  |
| 3 |  | INICIO | 0d | 2017-02-20 | 2017-02-20 |  |  |
| 4 |  | TERMINOS DE REFERENCIA. Objetivos. Condicionantes del Promotor | 10d | 2017-02-20 | 2017-03-06 | 3 |  |
| 5 |  | FINANCIACION | 7d | 2017-02-20 | 2017-02-28 | 3 |  |
| 6 |  | COMITÉ DE COORDINACION. Constitución y organización | 5d | 2017-02-20 | 2017-02-24 | 3 |  |
| 7 |  | EQUIPO DE FORMULACION. Recursos humanos y técnicos | 15d | 2017-02-27 | 2017-03-20 | 4SS, 6 |  |
| 8 |  | METODOLOGIA Y PLAN DE TRABAJO | 10d | 2017-03-21 | 2017-04-03 | 7, 5, 4, 6SS |  |
| 9 |  | DOC. Nº1: Fin P.F | 5d | 2017-04-04 | 2017-04-10 | 8 |  |
| 10 |  | Entrega al PROMOTOR. Doc. nº1 | 0d | 2017-04-11 | 2017-04-11 | 9 |  |
| 11 |  | SEMINARIO DE LANZAMIENTO DEL PROYECTO | 1d | 2017-04-11 | 2017-04-11 | 10 |  |
| 12 | 1.2 | **FASE 2: ANALISIS Y DIAGNOSTICO** | 94d | 2017-04-12 | 2017-08-25 |  |  |
| 13 | 1.2.1 | **ANALISIS ANTECEDENTES** | 15d | 2017-04-12 | 2017-05-05 | 11 |  |
| 14 |  | POLITICAS Y PROGRAMAS | 10d | 2017-04-12 | 2017-04-27 | 11 |  |
| 15 |  | MARCO LEGAL | 15d | 2017-04-12 | 2017-05-05 | 11 |  |
| 16 |  | BASES DE DATOS EXISTENTES | 7d | 2017-04-12 | 2017-04-24 | 11 |  |
| 17 | 1.2.2 | **ANALISIS DEL AREA DEL PROYECTO** | 80d | 2017-04-13 | 2017-08-04 | 11, 16 |  |
| 18 |  | ANALISIS DE RECURSOS NATURALES. INVENTARIO AMBIENTAL | 35d | 2017-02-20 | 2017-04-10 |  |  |
| 19 |  | INFRAESTRUCTURAS Y SERVICIOS | 20d | 2017-04-10 | 2017-05-10 | 18 |  |
| 20 |  | ANALISIS DE SECTORES PRODUCTIVOS | 25d | 2017-05-11 | 2017-06-14 | 14, 13, 15, 19 |  |
| 21 |  | ANALISIS POBLACIONAL | 20d | 2017-04-13 | 2017-05-12 |  |  |
| 22 |  | SISTEMA GENERAL TERRITORIAL DE INFORMACION | 21d | 2017-04-25 | 2017-05-24 | 16 |  |
| 23 | 1.2.3 | **ANALISIS DE AGENTES Y PARTICIPACION** | 82d | 2017-05-03 | 2017-08-25 |  |  |
| 24 |  | IDENTIFICACIÓN DE AGENTES Y TIPOLOGIA | 10d | 2017-05-03 | 2017-05-16 | 22SS+5d |  |
| 25 |  | ANALISIS DE LA PARTICIPACIÓN: ENCUESTA CON LOS AGENTES | 60d | 2017-05-17 | 2017-08-08 | 24 |  |
| 26 |  | TALLER DE PARTICIPACIÓN AGENTES PUBLICOS | 1d | 2017-05-31 | 2017-05-31 | 25SS+10d |  |
| 27 |  | ANALISIS PROSPECTIVO "SIN" | 6d | 2017-06-01 | 2017-06-08 | 26 |  |
| 28 |  | INFORME DE PARTICIPACION: Problemas, necesidades, oportunidades | 10d | 2017-08-09 | 2017-08-23 | 27, 25 |  |
| 29 |  | PRESENTACIÓN Y VALIDACION DE CONCLUSIONES | 2d | 2017-08-24 | 2017-08-25 | 28 |  |
| 30 |  | CONCLUSIONES Y Doc. Nº2. Presentación al PROMOTOR | 1d | 2017-08-25 | 2017-08-25 | 29 |  |
| 31 |  | Doc. nº2. REVISIÓN POR EL PROMOTOR | 0d | 2017-08-25 | 2017-08-25 | 29, 30 |  |
| 32 | 1.3 | **FASE 3: DISEÑO DEL PROYECTO** | 92d | 2017-08-28 | 2018-01-10 |  | 0d |
| 33 |  | OBJETIVOS Y METAS | 1d | 2017-08-28 | 2017-08-28 | 31 |  |
| 34 |  | ALTERNATIVA ESTRATEGICAS: ANÁLISIS Y SELECCIÓN | 7d | 2017-08-29 | 2017-09-06 | 33 |  |
| 35 |  | FORMULACION DE LOS COMPONENTES | 60d | 2017-09-07 | 2017-12-04 | 34 |  |
| 36 |  | DISEÑO DE LA ORGANIZACIÓN | 10d | 2017-12-05 | 2017-12-20 | 35 |  |
| 37 |  | SISTEMA DE SEGUIMIENTO Y EVALUACION. Programación de la ejecución | 7d | 2017-12-21 | 2018-01-01 | 36, 35 |  |
| 38 |  | PRESUPUESTACION | 4d | 2017-12-21 | 2017-12-27 | 35, 36 |  |
| 39 |  | Doc. Nº 3. Entrega al PROMOTOR | 0d | 2017-12-28 | 2017-12-28 | 38 |  |
| 40 |  | Doc. Nº 3. REVISION POR EL PROMOTOR | 10d | 2017-12-28 | 2018-01-10 | 39 |  |
| 41 | 1.4 | **FASE 4: EVALUACION MULTICRITERIO** | 15d | 2018-01-11 | 2018-01-31 |  | 0d |
| 42 |  | EVALUACION ECONOMICO-FINANCIERA | 10d | 2018-01-11 | 2018-01-24 | 40 |  |
| 43 |  | EVALUACION SOCIAL Y CULTURAL | 10d | 2018-01-11 | 2018-01-24 | 40 |  |
| 44 |  | EVALUACION AMBIENTAL | 10d | 2018-01-11 | 2018-01-24 | 40 |  |
| 45 |  | EVALUACION DE RIESGOS, SEGURIDAD Y SALUD DEL PROYECTO | 10d | 2018-01-11 | 2018-01-24 | 40 |  |
| 46 |  | Entrega Doc. nº 4. VIABILIDAD Y SOSTENIBLIDAD | 0d | 2018-01-25 | 2018-01-25 | 45 |  |
| 47 |  | Revisión Doc. nº 4 | 5d | 2018-01-25 | 2018-01-31 | 42, 43, 44 |  |
| 48 | 1.5 | **FASE 5: DOCUMENTACION** | 10d | 2018-02-01 | 2018-02-15 |  | 0d |
| 49 |  | MEMORIA | 6d | 2018-02-01 | 2018-02-08 | 47 |  |
| 50 |  | ANEJOS A LA MEMORIA | 10d | 2018-02-01 | 2018-02-14 | 47 |  |
| 51 |  | PLANOS | 10d | 2018-02-01 | 2018-02-14 | 47 |  |
| 52 |  | PLIEGO DE CONDICIONES | 3d | 2018-02-01 | 2018-02-05 | 47 |  |
| 53 |  | PRESUPUESTO | 3d | 2018-02-01 | 2018-02-05 | 47 |  |
| 54 |  | ESTUDIO DE SEGURIDAD Y SALUD | 10d | 2018-02-01 | 2018-02-14 | 47 |  |
| 55 |  | Entrega del proyecto | 0d | 2018-02-15 | 2018-02-15 | 54, 49, 50, 51, 52, 53 |  |

## Version 2 (saved 2017-03-26)

Note of the change: Recursos asignados. Próximo paso, optimizar.

Last finish 2018-02-15 → 2018-03-05 (+18d).

Changed:

| ID | Task | Start | Finish | Duration | Other |
| --- | --- | --- | --- | --- | --- |
| 2 | **FASE 1: PREPARACION PARA LA FORMULACION** |  | 2017-04-11 → 2017-04-12 (+1d) | 36d → 37d |  |
| 4 | TERMINOS DE REFERENCIA. Objetivos. Condicionantes del Promotor |  | 2017-03-06 → 2017-03-07 (+1d) | 10d → 11d | resources DIRECTOR PROYECTO [50%]; ECONOMISTA [25%]; INGENIERO EN MEDIOAMBIENTE [25%]; INGENIERO AGRONOMO [25%] → DIRECTOR PROYECTO [50%]; ECONOMISTA [15%]; INGENIERO EN MEDIOAMBIENTE [5%]; INGENIERO AGRONOMO [15%] |
| 5 | FINANCIACION |  | 2017-02-28 → 2017-03-01 (+1d) | 7d → 6d | resources DIRECTOR PROYECTO [15%]; ECONOMISTA [20%]; SOCIOLOGO [25%]; INGENIERO AGRONOMO [25%] → DIRECTOR PROYECTO [15%]; ECONOMISTA [20%]; SOCIOLOGO [20%]; INGENIERO AGRONOMO [15%] |
| 7 | EQUIPO DE FORMULACION. Recursos humanos y técnicos |  | 2017-03-20 → 2017-03-21 (+1d) | 15d → 16d |  |
| 8 | METODOLOGIA Y PLAN DE TRABAJO | 2017-03-21 → 2017-03-22 (+1d) | 2017-04-03 → 2017-04-04 (+1d) |  | resources INGENIERO AGRONOMO [50%]; DIRECTOR PROYECTO [50%]; ECONOMISTA [10%]; INGENIERO EN MEDIOAMBIENTE [50%]; ADMINISTRATIVO [50%]; SOCIOLOGO [50%] → INGENIERO AGRONOMO [10%]; DIRECTOR PROYECTO [50%]; ECONOMISTA [10%]; INGENIERO EN MEDIOAMBIENTE [50%]; ADMINISTRATIVO [50%]; SOCIOLOGO [50%] |
| 9 | DOC. Nº1: Fin P.F | 2017-04-04 → 2017-04-05 (+1d) | 2017-04-10 → 2017-04-11 (+1d) |  | resources DIRECTOR PROYECTO [50%]; ECONOMISTA [50%]; SOCIOLOGO [20%]; INGENIERO EN MEDIOAMBIENTE [20%]; INGENIERO AGRONOMO [20%]; ADMINISTRATIVO → DIRECTOR PROYECTO [50%]; ECONOMISTA [50%]; SOCIOLOGO [20%]; INGENIERO EN MEDIOAMBIENTE [20%]; INGENIERO AGRONOMO [20%]; ADMINISTRATIVO [50%] |
| 10 | Entrega al PROMOTOR. Doc. nº1 | 2017-04-11 → 2017-04-12 (+1d) | 2017-04-11 → 2017-04-12 (+1d) |  |  |
| 11 | SEMINARIO DE LANZAMIENTO DEL PROYECTO | 2017-04-11 → 2017-04-12 (+1d) | 2017-04-11 → 2017-04-12 (+1d) |  | resources DIRECTOR PROYECTO; ECONOMISTA; SOCIOLOGO; INGENIERO EN MEDIOAMBIENTE; ADMINISTRATIVO → DIRECTOR PROYECTO [50%]; ECONOMISTA; SOCIOLOGO [50%]; INGENIERO EN MEDIOAMBIENTE; ADMINISTRATIVO [50%] |
| 12 | **FASE 2: ANALISIS Y DIAGNOSTICO** |  | 2017-08-25 → 2017-09-04 (+10d) | 94d → 99d |  |
| 13 | **ANALISIS ANTECEDENTES** |  | 2017-05-05 → 2017-05-11 (+6d) | 15d → 19d |  |
| 14 | POLITICAS Y PROGRAMAS | 2017-04-12 → 2017-04-17 (+5d) | 2017-04-27 → 2017-05-03 (+6d) | 10d → 12d | resources DIRECTOR PROYECTO [20%]; INGENIERO AGRONOMO [50%]; ECONOMISTA [40%]; ADMINISTRATIVO [20%]; INGENIERO EN MEDIOAMBIENTE [20%] → DIRECTOR PROYECTO [20%]; INGENIERO AGRONOMO [20%]; ECONOMISTA [40%]; ADMINISTRATIVO [20%]; INGENIERO EN MEDIOAMBIENTE [20%] |
| 15 | MARCO LEGAL | 2017-04-12 → 2017-04-17 (+5d) | 2017-05-05 → 2017-05-11 (+6d) | 15d → 18d | resources DIRECTOR PROYECTO [20%]; INGENIERO AGRONOMO [20%]; ADMINISTRATIVO [50%]; ECONOMISTA [40%] → DIRECTOR PROYECTO [20%]; INGENIERO AGRONOMO [10%]; ADMINISTRATIVO [20%]; ECONOMISTA [40%] |
| 16 | BASES DE DATOS EXISTENTES | 2017-04-12 → 2017-04-17 (+5d) | 2017-04-24 → 2017-04-27 (+3d) | 7d → 9d | resources DIRECTOR PROYECTO [20%]; INGENIERO AGRONOMO [50%] → DIRECTOR PROYECTO [20%]; INGENIERO AGRONOMO [30%] |
| 17 | **ANALISIS DEL AREA DEL PROYECTO** | 2017-04-13 → 2017-04-17 (+4d) | 2017-08-04 → 2017-08-07 (+3d) |  |  |
| 18 | ANALISIS DE RECURSOS NATURALES. INVENTARIO AMBIENTAL |  | 2017-04-10 → 2017-04-11 (+1d) | 35d → 36d | resources INGENIERO EN MEDIOAMBIENTE; INGENIERO AGRONOMO [50%]; ECONOMISTA [40%]; ADMINISTRATIVO [20%]; EXPERTO GIS [50%] → INGENIERO EN MEDIOAMBIENTE [50%]; INGENIERO AGRONOMO [25%]; ECONOMISTA [40%]; ADMINISTRATIVO [20%]; EXPERTO GIS [50%] |
| 19 | INFRAESTRUCTURAS Y SERVICIOS |  | 2017-05-10 → 2017-08-29 (+111d) | 20d → 47d | resources DIRECTOR PROYECTO [10%]; ADMINISTRATIVO [25%]; INGENIERO AGRONOMO; SOCIOLOGO [50%] → DIRECTOR PROYECTO [10%]; ADMINISTRATIVO [25%]; INGENIERO AGRONOMO [25%]; SOCIOLOGO [25%] |
| 20 | ANALISIS DE SECTORES PRODUCTIVOS | 2017-05-11 → 2017-05-16 (+5d) | 2017-06-14 → 2017-06-19 (+5d) |  | resources DIRECTOR PROYECTO [20%]; ECONOMISTA; INGENIERO AGRONOMO [50%]; ADMINISTRATIVO [50%] → DIRECTOR PROYECTO [20%]; ECONOMISTA [50%]; INGENIERO AGRONOMO [20%]; ADMINISTRATIVO [25%] |
| 21 | ANALISIS POBLACIONAL | 2017-04-13 → 2017-04-17 (+4d) | 2017-05-12 → 2017-05-17 (+5d) | 20d → 22d | resources INGENIERO AGRONOMO [25%]; ADMINISTRATIVO [25%]; SOCIOLOGO → INGENIERO AGRONOMO [15%]; ADMINISTRATIVO [25%]; SOCIOLOGO [25%] |
| 22 | SISTEMA GENERAL TERRITORIAL DE INFORMACION | 2017-04-25 → 2017-04-28 (+3d) | 2017-05-24 → 2017-05-30 (+6d) | 21d → 22d | resources INGENIERO AGRONOMO [25%]; ADMINISTRATIVO [25%]; EXPERTO GIS; SOCIOLOGO → INGENIERO AGRONOMO [15%]; ADMINISTRATIVO [25%]; EXPERTO GIS; SOCIOLOGO [10%] |
| 23 | **ANALISIS DE AGENTES Y PARTICIPACION** |  | 2017-08-25 → 2017-08-31 (+6d) | 82d → 86d |  |
| 24 | IDENTIFICACIÓN DE AGENTES Y TIPOLOGIA | 2017-05-03 → 2017-05-08 (+5d) | 2017-05-16 → 2017-05-19 (+3d) |  | resources DIRECTOR PROYECTO [50%]; INGENIERO AGRONOMO [50%]; ADMINISTRATIVO [25%]; SOCIOLOGO → DIRECTOR PROYECTO [50%]; INGENIERO AGRONOMO [25%]; ADMINISTRATIVO [25%]; SOCIOLOGO [15%] |
| 25 | ANALISIS DE LA PARTICIPACIÓN: ENCUESTA CON LOS AGENTES | 2017-05-17 → 2017-05-22 (+5d) | 2017-08-08 → 2017-08-11 (+3d) |  | resources DIRECTOR PROYECTO [50%]; INGENIERO AGRONOMO [50%]; ADMINISTRATIVO [25%]; SOCIOLOGO → DIRECTOR PROYECTO [50%]; INGENIERO AGRONOMO [25%]; ADMINISTRATIVO [25%]; SOCIOLOGO [20%] |
| 26 | TALLER DE PARTICIPACIÓN AGENTES PUBLICOS | 2017-05-31 → 2017-06-05 (+5d) | 2017-05-31 → 2017-06-05 (+5d) |  | resources INGENIERO AGRONOMO [50%]; ADMINISTRATIVO [50%]; DIRECTOR PROYECTO [15%]; SOCIOLOGO → INGENIERO AGRONOMO [50%]; ADMINISTRATIVO [50%]; DIRECTOR PROYECTO [15%]; SOCIOLOGO [20%] |
| 27 | ANALISIS PROSPECTIVO "SIN" | 2017-06-01 → 2017-06-06 (+5d) | 2017-06-08 → 2017-06-13 (+5d) |  |  |
| 28 | INFORME DE PARTICIPACION: Problemas, necesidades, oportunidades | 2017-08-09 → 2017-08-14 (+5d) | 2017-08-23 → 2017-08-29 (+6d) | 10d → 11d |  |
| 29 | PRESENTACIÓN Y VALIDACION DE CONCLUSIONES | 2017-08-24 → 2017-08-30 (+6d) | 2017-08-25 → 2017-08-31 (+6d) |  |  |
| 30 | CONCLUSIONES Y Doc. Nº2. Presentación al PROMOTOR | 2017-08-25 → 2017-09-01 (+7d) | 2017-08-25 → 2017-09-01 (+7d) |  |  |
| 31 | Doc. nº2. REVISIÓN POR EL PROMOTOR | 2017-08-25 → 2017-09-04 (+10d) | 2017-08-25 → 2017-09-04 (+10d) |  |  |
| 32 | **FASE 3: DISEÑO DEL PROYECTO** | 2017-08-28 → 2017-09-04 (+7d) | 2018-01-10 → 2018-01-25 (+15d) | 92d → 98d |  |
| 33 | OBJETIVOS Y METAS | 2017-08-28 → 2017-09-04 (+7d) | 2017-08-28 → 2017-09-04 (+7d) |  |  |
| 34 | ALTERNATIVA ESTRATEGICAS: ANÁLISIS Y SELECCIÓN | 2017-08-29 → 2017-09-05 (+7d) | 2017-09-06 → 2017-09-14 (+8d) |  |  |
| 35 | FORMULACION DE LOS COMPONENTES | 2017-09-07 → 2017-09-15 (+8d) | 2017-12-04 → 2017-12-18 (+14d) | 60d → 63d |  |
| 36 | DISEÑO DE LA ORGANIZACIÓN | 2017-12-05 → 2017-12-19 (+14d) | 2017-12-20 → 2018-01-04 (+15d) | 10d → 12d |  |
| 37 | SISTEMA DE SEGUIMIENTO Y EVALUACION. Programación de la ejecución | 2017-12-21 → 2018-01-05 (+15d) | 2018-01-01 → 2018-01-16 (+15d) | 7d → 8d |  |
| 38 | PRESUPUESTACION | 2017-12-21 → 2018-01-05 (+15d) | 2017-12-27 → 2018-01-11 (+15d) | 4d → 5d |  |
| 39 | Doc. Nº 3. Entrega al PROMOTOR | 2017-12-28 → 2018-01-12 (+15d) | 2017-12-28 → 2018-01-12 (+15d) |  |  |
| 40 | Doc. Nº 3. REVISION POR EL PROMOTOR | 2017-12-28 → 2018-01-12 (+15d) | 2018-01-10 → 2018-01-25 (+15d) |  |  |
| 41 | **FASE 4: EVALUACION MULTICRITERIO** | 2018-01-11 → 2018-01-26 (+15d) | 2018-01-31 → 2018-02-15 (+15d) |  |  |
| 42 | EVALUACION ECONOMICO-FINANCIERA | 2018-01-11 → 2018-01-26 (+15d) | 2018-01-24 → 2018-02-08 (+15d) |  | resources DIRECTOR PROYECTO [25%]; INGENIERO AGRONOMO [50%]; ECONOMISTA → DIRECTOR PROYECTO [25%]; INGENIERO AGRONOMO [25%]; ECONOMISTA [20%] |
| 43 | EVALUACION SOCIAL Y CULTURAL | 2018-01-11 → 2018-01-26 (+15d) | 2018-01-24 → 2018-02-08 (+15d) |  | resources DIRECTOR PROYECTO [25%]; INGENIERO AGRONOMO [50%]; ECONOMISTA [15%]; SOCIOLOGO → DIRECTOR PROYECTO [25%]; INGENIERO AGRONOMO [25%]; ECONOMISTA [15%]; SOCIOLOGO |
| 44 | EVALUACION AMBIENTAL | 2018-01-11 → 2018-01-26 (+15d) | 2018-01-24 → 2018-02-08 (+15d) |  | resources DIRECTOR PROYECTO [25%]; INGENIERO AGRONOMO [50%]; ECONOMISTA [15%]; INGENIERO EN MEDIOAMBIENTE → DIRECTOR PROYECTO [25%]; INGENIERO AGRONOMO [25%]; ECONOMISTA [15%]; INGENIERO EN MEDIOAMBIENTE |
| 45 | EVALUACION DE RIESGOS, SEGURIDAD Y SALUD DEL PROYECTO | 2018-01-11 → 2018-01-26 (+15d) | 2018-01-24 → 2018-02-08 (+15d) |  | resources DIRECTOR PROYECTO [25%]; INGENIERO AGRONOMO [50%]; ECONOMISTA [15%]; TECNICOS DE APOYO → DIRECTOR PROYECTO [25%]; INGENIERO AGRONOMO [25%]; ECONOMISTA [15%]; TECNICOS DE APOYO |
| 46 | Entrega Doc. nº 4. VIABILIDAD Y SOSTENIBLIDAD | 2018-01-25 → 2018-02-09 (+15d) | 2018-01-25 → 2018-02-09 (+15d) |  |  |
| 47 | Revisión Doc. nº 4 | 2018-01-25 → 2018-02-09 (+15d) | 2018-01-31 → 2018-02-15 (+15d) |  |  |
| 48 | **FASE 5: DOCUMENTACION** | 2018-02-01 → 2018-02-16 (+15d) | 2018-02-15 → 2018-03-05 (+18d) |  |  |
| 49 | MEMORIA | 2018-02-01 → 2018-02-16 (+15d) | 2018-02-08 → 2018-02-23 (+15d) |  | resources INGENIERO AGRONOMO [50%]; ECONOMISTA [25%]; DIRECTOR PROYECTO [10%]; TECNICOS DE APOYO → INGENIERO AGRONOMO [15%]; ECONOMISTA [15%]; DIRECTOR PROYECTO [10%]; TECNICOS DE APOYO [15%] |
| 50 | ANEJOS A LA MEMORIA | 2018-02-01 → 2018-02-16 (+15d) | 2018-02-14 → 2018-03-02 (+16d) |  | resources INGENIERO AGRONOMO [50%]; ECONOMISTA [25%]; DIRECTOR PROYECTO [10%]; INGENIERO EN MEDIOAMBIENTE [50%]; ADMINISTRATIVO [50%]; TECNICOS DE APOYO → INGENIERO AGRONOMO [15%]; ECONOMISTA [15%]; DIRECTOR PROYECTO [10%]; INGENIERO EN MEDIOAMBIENTE [15%]; ADMINISTRATIVO [15%]; TECNICOS DE APOYO [30%] |
| 51 | PLANOS | 2018-02-01 → 2018-02-16 (+15d) | 2018-02-14 → 2018-03-02 (+16d) |  | resources INGENIERO AGRONOMO [50%]; ECONOMISTA [25%]; DIRECTOR PROYECTO [10%]; INGENIERO EN MEDIOAMBIENTE [50%]; ADMINISTRATIVO [50%]; TECNICOS DE APOYO → INGENIERO AGRONOMO [15%]; ECONOMISTA [15%]; DIRECTOR PROYECTO [10%]; INGENIERO EN MEDIOAMBIENTE [15%]; ADMINISTRATIVO [15%]; TECNICOS DE APOYO [30%] |
| 52 | PLIEGO DE CONDICIONES | 2018-02-01 → 2018-02-16 (+15d) | 2018-02-05 → 2018-02-20 (+15d) |  | resources INGENIERO AGRONOMO [50%]; ECONOMISTA [25%]; DIRECTOR PROYECTO [10%]; INGENIERO EN MEDIOAMBIENTE [50%]; ADMINISTRATIVO [50%]; TECNICOS DE APOYO → INGENIERO AGRONOMO [15%]; ECONOMISTA [15%]; DIRECTOR PROYECTO [10%]; INGENIERO EN MEDIOAMBIENTE [15%]; ADMINISTRATIVO [15%]; TECNICOS DE APOYO [30%] |
| 53 | PRESUPUESTO | 2018-02-01 → 2018-02-16 (+15d) | 2018-02-05 → 2018-02-20 (+15d) |  | resources ECONOMISTA [25%]; INGENIERO AGRONOMO [50%]; DIRECTOR PROYECTO [10%]; INGENIERO EN MEDIOAMBIENTE [50%]; ADMINISTRATIVO [50%]; TECNICOS DE APOYO → ECONOMISTA [15%]; INGENIERO AGRONOMO [15%]; DIRECTOR PROYECTO [10%]; INGENIERO EN MEDIOAMBIENTE [15%]; ADMINISTRATIVO [15%]; TECNICOS DE APOYO [30%] |
| 54 | ESTUDIO DE SEGURIDAD Y SALUD | 2018-02-01 → 2018-02-16 (+15d) | 2018-02-14 → 2018-03-02 (+16d) |  | resources INGENIERO AGRONOMO [50%]; ECONOMISTA [25%]; DIRECTOR PROYECTO [10%]; INGENIERO EN MEDIOAMBIENTE [50%]; ADMINISTRATIVO [50%]; TECNICOS DE APOYO → INGENIERO AGRONOMO [15%]; ECONOMISTA [15%]; DIRECTOR PROYECTO [10%]; INGENIERO EN MEDIOAMBIENTE [15%]; ADMINISTRATIVO [15%]; TECNICOS DE APOYO [30%] |
| 55 | Entrega del proyecto | 2018-02-15 → 2018-03-05 (+18d) | 2018-02-15 → 2018-03-05 (+18d) |  |  |

## Version 3 (saved 2017-03-26)

Note of the change: Fichero final, fallo de subida previa.

Last finish stays 2018-03-05.

Changed:

| ID | Task | Start | Finish | Duration |
| --- | --- | --- | --- | --- |
| 19 | INFRAESTRUCTURAS Y SERVICIOS | 2017-04-10 → 2017-04-17 (+7d) | 2017-08-29 → 2017-05-15 (-106d) | 47d → 20d |

## Version 4 (saved 2017-03-26)

Note of the change: Subida final. Fin de práctica.

Last finish stays 2018-03-05.

Changed:

| ID | Task | Finish | Duration | Other |
| --- | --- | --- | --- | --- |
| 1 | **Total Proyecto** | 2018-02-15 → 2018-03-05 (+18d) | 247d → 258d |  |
| 22 | SISTEMA GENERAL TERRITORIAL DE INFORMACION |  |  | resources INGENIERO AGRONOMO [15%]; ADMINISTRATIVO [25%]; EXPERTO GIS; SOCIOLOGO [10%] → INGENIERO AGRONOMO [15%]; ADMINISTRATIVO [25%]; EXPERTO GIS [50%]; SOCIOLOGO [10%] |

## Version 5 (saved 2017-03-26)

Note of the change: Optimización Tarea FINANCIACION

Last finish stays 2018-03-05.

Changed:

| ID | Task | Other |
| --- | --- | --- |
| 4 | TERMINOS DE REFERENCIA. Objetivos. Condicionantes del Promotor | resources DIRECTOR PROYECTO [50%]; ECONOMISTA [15%]; INGENIERO EN MEDIOAMBIENTE [5%]; INGENIERO AGRONOMO [15%] → DIRECTOR PROYECTO [50%]; ECONOMISTA [10%]; INGENIERO EN MEDIOAMBIENTE [5%]; INGENIERO AGRONOMO [15%] |
| 5 | FINANCIACION | resources DIRECTOR PROYECTO [15%]; ECONOMISTA [20%]; SOCIOLOGO [20%]; INGENIERO AGRONOMO [15%] → DIRECTOR PROYECTO [15%]; ECONOMISTA [40%]; SOCIOLOGO [20%]; INGENIERO AGRONOMO [15%] |
| 7 | EQUIPO DE FORMULACION. Recursos humanos y técnicos | resources DIRECTOR PROYECTO [25%]; ECONOMISTA [20%]; SOCIOLOGO [10%]; INGENIERO EN MEDIOAMBIENTE [10%]; INGENIERO AGRONOMO [10%]; ADMINISTRATIVO [10%] → DIRECTOR PROYECTO [25%]; ECONOMISTA [10%]; SOCIOLOGO [10%]; INGENIERO EN MEDIOAMBIENTE [10%]; INGENIERO AGRONOMO [10%]; ADMINISTRATIVO [10%] |

## Version 6 (saved 2017-03-26)

Note of the change: Faltaba en la primera tarea SOCIOLOGO[25%]

Last finish stays 2018-03-05.

Changed:

| ID | Task | Other |
| --- | --- | --- |
| 4 | TERMINOS DE REFERENCIA. Objetivos. Condicionantes del Promotor | resources DIRECTOR PROYECTO [50%]; ECONOMISTA [10%]; INGENIERO EN MEDIOAMBIENTE [5%]; INGENIERO AGRONOMO [15%] → DIRECTOR PROYECTO [50%]; ECONOMISTA [10%]; INGENIERO EN MEDIOAMBIENTE [5%]; INGENIERO AGRONOMO [15%]; SOCIOLOGO [25%] |
